# 集控III区高级应用

Schedule from a web Gantt chart, 2024-05-06 to 2025-06-30.
Saturdays and Sundays are off

## Schedule

| ID | WBS | Task | Duration | Start | Finish | Status |
| --- | --- | --- | --- | --- | --- | --- |
| 2 | 1 | **一期** | 36d | 2024-05-06 | 2024-06-24 |  |
| 3 | 1.1 | V1.0 架构搭建与需求梳理 | 5d | 2024-05-06 | 2024-05-10 |  |
| 4 | 1.2 | V1.1 实时监视模块(区域监视+场站监视)与指标计算组件迁移 | 10d | 2024-05-13 | 2024-05-24 |  |
| 5 | 1.3 | V1.2 实时监视(设备监视) | 10d | 2024-05-27 | 2024-06-07 |  |
| 6 | 1.4 | V1.3 XXXX | 10d | 2024-06-10 | 2024-06-21 |  |
| 7 | 1.5 | V1.4 XXXX | 1d | 2024-06-24 | 2024-06-24 |  |
| 8 | 2 | 二期 | 107d | 2024-11-01 | 2025-03-31 | waiting |
| 9 | 3 | 三期 | 65d | 2025-04-01 | 2025-06-30 | waiting |
